# BIME Final Development

Schedule from MS Project, 2022-09-30 to 2022-12-19, A marks actual dates.

## Calendars

- Standard: Mon-Fri 08:00-12:00, 13:00-17:00; Sat-Sun off.

## Resources

| Resource |
| --- |
| Project Manager |
| Mechnical |
| Electrical |
| Software |

## Schedule

| ID | WBS | Task | Type | Duration | Start | Finish | Predecessors | Complete | Total slack | Free slack | Constraint | Resources | Work | Actual work |
| --- | --- | --- | --- | --- | --- | --- | --- | --- | --- | --- | --- | --- | --- | --- |
| 1 | 1 | **Project Planing** |  | 8.5d | 2022-09-30 A | 2022-10-12 A |  | 100% |  |  |  |  | 68h | 68h |
| 2 | 1.1 | Initial Project |  | 4h | 2022-09-30 A | 2022-10-02 A |  | 100% |  |  | finish no earlier than 2022-10-02 | Project Manager | 4h | 4h |
| 3 | 1.2 | Ensure the Requirement |  | 1d | 2022-10-03 A | 2022-10-05 A | 2 | 100% |  |  |  | Project Manager | 8h | 8h |
| 4 | 1.3 | Planning Schedule |  | 2d | 2022-10-03 A | 2022-10-07 A | 2 | 100% |  |  |  | Project Manager | 16h | 16h |
| 5 | 1.4 | Block Diagram |  | 5d | 2022-10-04 A | 2022-10-12 A | 2 | 100% |  |  |  | Project Manager | 40h | 40h |
| 6 | 1.5 | Scope Complete | milestone | 0d | 2022-10-12 A | 2022-10-12 A | 5, 3, 4 | 100% |  |  |  |  |  |  |
| 7 | 2 | **Electrical** |  | 39d | 2022-10-13 A | 2022-12-06 A | 6 | 100% |  |  |  |  | 184h | 184h |
| 8 | 2.1 | Buck Converter Board Developing |  | 8d | 2022-10-13 A | 2022-10-24 A |  | 100% |  |  |  | Electrical | 64h | 64h |
| 9 | 2.2 | Buck Converter Board Manufacturing |  | 9d | 2022-10-25 A | 2022-11-04 A | 8 | 100% |  |  |  |  |  |  |
| 10 | 2.3 | Buck Converter Board Testing |  | 1d | 2022-11-07 A | 2022-11-07 A | 9 | 100% |  |  |  | Electrical | 8h | 8h |
| 11 | 2.4 | DP1 Board Developing |  | 14d | 2022-11-08 A | 2022-11-25 A | 10 | 100% |  |  |  | Electrical | 112h | 112h |
| 12 | 2.5 | DP1 Board Manufacturing |  | 7d | 2022-11-28 A | 2022-12-06 A | 11 | 100% |  |  |  |  |  |  |
| 13 | 2.6 | VP1 Board Developing | inactive | 7d | 2022-11-29 | 2022-12-12 | 11 |  | -7.42d | 0d |  | Electrical | 56h |  |
| 14 | 2.7 | VP1 Board Manufacturing | inactive | 1w | 2022-12-12 | 2022-12-19 | 13 |  | -7.42d | 0d |  | Electrical | 40h |  |
| 15 | 2.8 | Electrical Components Complete | milestone | 0d | 2022-12-06 A | 2022-12-06 A | 12 | 100% |  |  |  |  |  |  |
| 16 | 3 | **Mechanical** |  | 40.92d | 2022-10-06 A | 2022-12-01 A |  | 100% |  |  |  |  | 352h | 352h |
| 17 | 3.1 | Plan the Bold Structure |  | 1mo | 2022-10-06 A | 2022-11-02 A | 3 | 100% |  |  |  | Mechnical | 160h | 160h |
| 18 | 3.2 | Car Body Design |  | 7d | 2022-10-13 A | 2022-11-30 A | 17 | 100% |  |  |  | Mechnical | 56h | 56h |
| 19 | 3.3 | Gripper Design |  | 5d | 2022-11-10 A | 2022-11-24 A | 17 | 100% |  |  |  | Mechnical | 40h | 40h |
| 20 | 3.4 | Camera Holder Design |  | 5d | 2022-11-03 A | 2022-11-09 A | 17 | 100% |  |  |  | Mechnical | 40h | 40h |
| 21 | 3.5 | Obstacle Sensor Holder Design |  | 5d | 2022-11-14 A | 2022-11-21 A | 17 | 100% |  |  |  | Mechnical | 40h | 40h |
| 22 | 3.6 | Thermal Sensor Holder Design |  | 2d | 2022-11-23 A | 2022-12-01 A | 17 | 100% |  |  |  | Mechnical | 16h | 16h |
| 23 | 3.7 | Mechanical Components Complete | milestone | 0d | 2022-12-01 A | 2022-12-01 A | 18, 19, 20, 21, 22 | 100% |  |  |  |  |  |  |
| 24 | 4 | **Software** |  | 43d | 2022-10-03 A | 2022-11-30 A |  | 100% |  |  |  |  | 344h | 344h |
| 25 | 4.1 | Research Similar Solution |  | 2w | 2022-10-03 A | 2022-10-14 A | 2 | 100% |  |  |  | Software | 80h | 80h |
| 26 | 4.2 | Setup Environment |  | 2w | 2022-10-17 A | 2022-10-28 A | 25 | 100% |  |  |  | Software | 80h | 80h |
| 27 | 4.3 | USB Cam Connect |  | 1w | 2022-10-31 A | 2022-11-04 A | 26 | 100% |  |  |  | Software | 40h | 40h |
| 28 | 4.4 | Controller Implementation |  | 2w | 2022-11-07 A | 2022-11-18 A | 26 | 100% |  |  |  | Software | 80h | 80h |
| 29 | 4.5 | Wheel Control Implementation |  | 3d | 2022-11-21 A | 2022-11-23 A | 26 | 100% |  |  |  | Software | 24h | 24h |
| 30 | 4.6 | Gripper Control Implementation |  | 2d | 2022-11-24 A | 2022-11-25 A | 26 | 100% |  |  |  | Software | 16h | 16h |
| 31 | 4.7 | Obstacle Detector Implementation |  | 1d | 2022-11-28 A | 2022-11-28 A | 26 | 100% |  |  |  | Software | 8h | 8h |
| 32 | 4.8 | Buzzer Control Implementation |  | 1d | 2022-11-29 A | 2022-11-29 A | 26 | 100% |  |  |  | Software | 8h | 8h |
| 33 | 4.9 | Thermal Sensor Implementation |  | 1d | 2022-11-30 A | 2022-11-30 A | 26 | 100% |  |  |  | Software | 8h | 8h |
| 34 | 4.10 | Software Components Complete | milestone | 0d | 2022-11-30 A | 2022-11-30 A | 31, 32, 33 | 100% |  |  |  |  |  |  |

| ID | WBS | Task | Type | Duration | Start | Finish | Predecessors | Complete | Constraint | Deadline | Resources | Work | Actual work |
| --- | --- | --- | --- | --- | --- | --- | --- | --- | --- | --- | --- | --- | --- |
| 35 | 5 | **Testing** |  | 8.25d | 2022-11-25 A | 2022-12-08 A |  | 100% |  | 2022-12-08 |  | 15.67h | 15.67h |
| 36 | 5.1 | **Unit Testing** |  | 8.12d | 2022-11-25 A | 2022-12-08 A |  | 100% |  |  |  | 5h | 5h |
| 37 | 5.1.1 | Controller Testing |  | 1h | 2022-12-01 A | 2022-12-01 A | 28 | 100% |  |  | Electrical; Software | 1h | 1h |
| 38 | 5.1.2 | Wheel Control Adjustment |  | 1h | 2022-11-30 A | 2022-12-02 A | 29, 18 | 100% |  |  | Electrical; Mechnical; Software | 1h | 1h |
| 39 | 5.1.3 | Gripper Control Adjustment |  | 1h | 2022-11-25 A | 2022-11-28 A | 30, 19 | 100% | start no earlier than 2022-11-20 |  | Electrical; Mechnical; Software | 1h | 1h |
| 40 | 5.1.4 | Obstacle Detector Calibration |  | 1h | 2022-11-28 A | 2022-11-29 A | 11, 31, 21 | 100% |  |  | Electrical; Mechnical; Software | 1h | 1h |
| 41 | 5.1.5 | Thermal Sensor Testing |  | 1h | 2022-11-30 A | 2022-12-08 A | 33 | 100% |  |  | Electrical; Software | 1h | 1h |
| 42 | 5.1.6 | Unit Testing Complete | milestone | 0d | 2022-12-08 A | 2022-12-08 A | 41, 37, 38, 39, 40 | 100% |  |  |  |  |  |
| 43 | 5.2 | **Integration Testing** |  | 4.21d | 2022-12-02 A | 2022-12-08 A |  | 100% |  |  |  | 10.67h | 10.67h |
| 44 | 5.2.1 | Integration Basic Testing |  | 1d | 2022-12-02 A | 2022-12-05 A | 37, 38, 39 | 100% |  |  | Electrical; Mechnical; Software | 10.67h | 10.67h |
| 45 | 5.2.2 | Integration Bonus Testing Complete |  | 1h | 2022-12-08 A | 2022-12-08 A | 44, 40, 41, 42 | 100% |  |  |  |  |  |
